# Piling Project Example

Schedule from MS Project, 2021-08-29 to 2022-02-16, costs in $.
Metrolinx

## Calendars

- Standard: Mon-Fri 08:00-12:00, 13:00-17:00; Sat-Sun off.

## Resources

| Resource | Group | Unit |
| --- | --- | --- |
| Designers | Design |  |
| Buyer |  |  |
| Materials |  | Pipes |
| Foreman |  |  |
| Operator |  |  |
| Machine |  |  |
| testing equipment |  |  |
| Piling Rig |  |  |
| 17 |  |  |

## Schedule

| ID | WBS | Task | Type | Duration | Start | Finish | Predecessors | Total slack | Free slack | Resources | Work | Cost |
| --- | --- | --- | --- | --- | --- | --- | --- | --- | --- | --- | --- | --- |
| 1 | 1 | **Key Milestones** |  | 123d | 2021-08-29 | 2022-02-16 |  | 0d |  |  |  |  |
| 2 | 1.1 | Project Start | milestone | 0d | 2021-08-29 | 2021-08-29 |  | 12d | 0d |  |  |  |
| 3 | 1.2 | Design & Engineering Start | milestone | 0d | 2021-08-30 | 2021-08-30 | 8SS | 71d |  |  |  |  |
| 4 | 1.3 | Design & Engineering Finish | milestone | 0d | 2021-10-07 | 2021-10-07 | 8FF | 42d |  |  |  |  |
| 5 | 1.4 | Piling Start | milestone | 0d | 2022-02-03 | 2022-02-03 | 23SS, 30SS, 37SS, 44SS, 51SS | 10d |  |  |  |  |
| 6 | 1.5 | Piling Finish | milestone | 0d | 2022-02-16 | 2022-02-16 | 54 | 0d |  |  |  |  |
| 7 | 2 | **Desing & Engineering Phase** |  | 59d | 2021-08-30 | 2021-11-18 |  | 48d |  |  | 472h | 35,460 |
| 8 | 2.1 | Detailed Design |  | 29d | 2021-08-30 | 2021-10-07 | 2 | 48d | 0d | Designers | 232h | 17,420 |
| 9 | 2.2 | Drawing & Specs Review |  | 15d | 2021-10-08 | 2021-10-28 | 8 | 64d | 0d | Designers | 120h | 9,020 |
| 10 | 2.3 | IFC |  | 15d | 2021-10-29 | 2021-11-18 | 9 | 64d |  | Designers | 120h | 9,020 |
| 11 | 3 | Permit |  | 4d | 2021-10-08 | 2021-10-13 | 8 | 30d | 0d |  |  |  |
| 12 | 4 | Handover of the work location site |  | 1d | 2021-10-14 | 2021-10-14 | 11 | 30d | 0d |  |  |  |
| 13 | 5 | **Procurement Phase** |  | 70d | 2021-08-30 | 2021-12-03 |  | 0d |  |  | 560h | 67,200 |
| 14 | 5.1 | Issue RFQ |  | 15d | 2021-08-30 | 2021-09-17 |  | 0d |  | Buyer | 120h | 14,400 |
| 15 | 5.2 | Receive Proposals |  | 1d | 2021-09-20 | 2021-09-20 | 14 | 0d |  | Buyer | 8h | 960 |
| 16 | 5.3 | Technical & Commercial Evaluations |  | 54d | 2021-09-21 | 2021-12-03 | 15 | 0d |  | Buyer | 432h | 51,840 |
| 17 | 5.4 | Award | milestone | 0d | 2021-12-03 | 2021-12-03 | 16 | 0d |  | Buyer |  |  |
| 18 | 6 | **Construction Phase** |  | 90d | 2021-10-14 | 2022-02-16 |  | 0d |  |  | 1048h | 203,236 |
| 19 | 6.1 | Mobilization |  | 11d | 2021-12-06 | 2021-12-20 | 17 | 0d |  |  |  |  |
| 20 | 6.2 | **Area 01** |  | 12d | 2021-12-21 | 2022-01-05 |  | 0d |  |  | 184h | 16,660 |
| 21 | 6.2.1 | Permit Received |  | 1d | 2021-12-21 | 2021-12-21 | 11, 19 | 0d |  |  |  |  |
| 22 | 6.2.2 | Piling Rig move |  | 1d | 2021-12-22 | 2021-12-22 | 21 | 0d |  | Foreman; Machine; Materials [1 Pipes]; Operator; Piling Rig | 24h | 8,340 |
| 23 | 6.2.3 | Piling installation |  | 4d | 2021-12-23 | 2021-12-28 | 22 | 0d |  | Foreman; Machine; Materials [1 Pipes]; Operator | 64h | 3,316 |
| 24 | 6.2.4 | Piling Testing & Inspection |  | 2d | 2021-12-29 | 2021-12-30 | 23 | 0d |  | Foreman; Machine; Materials [1 Pipes]; Operator | 32h | 1,668 |
| 25 | 6.2.5 | Piling cap installation |  | 3d | 2021-12-31 | 2022-01-04 | 24 | 0d |  | Foreman; Machine; Materials [1 Pipes]; Operator | 48h | 2,492 |
| 26 | 6.2.6 | Backfilling and site cleanup |  | 1d | 2022-01-05 | 2022-01-05 | 25 | 30d |  | Foreman; Machine; Materials [1 Pipes]; Operator | 16h | 844 |

| ID | WBS | Task | Duration | Start | Finish | Predecessors | Total slack | Resources | Work | Cost |
| --- | --- | --- | --- | --- | --- | --- | --- | --- | --- | --- |
| 27 | 6.3 | **Area 02** | 70d | 2021-10-14 | 2022-01-19 |  | 20d |  | 216h | 46,644 |
| 28 | 6.3.1 | Permit Received | 1d | 2021-10-14 | 2021-10-14 | 11 | 58d |  |  |  |
| 29 | 6.3.2 | Piling Rig move | 1d | 2022-01-05 | 2022-01-05 | 28, 25 | 0d | Foreman; Machine; Materials [1 Pipes]; Operator; Piling Rig | 24h | 8,340 |
| 30 | 6.3.3 | Piling installation | 4d | 2022-01-06 | 2022-01-11 | 29 | 0d | Foreman; Machine; Materials [1 Pipes]; Operator; Piling Rig | 96h | 33,300 |
| 31 | 6.3.4 | Piling Testing & Inspection | 2d | 2022-01-12 | 2022-01-13 | 30 | 0d | Foreman; Machine; Materials [1 Pipes]; Operator | 32h | 1,668 |
| 32 | 6.3.5 | Piling cap installation | 3d | 2022-01-14 | 2022-01-18 | 31 | 0d | Foreman; Machine; Materials [1 Pipes]; Operator | 48h | 2,492 |
| 33 | 6.3.6 | Backfilling and site cleanup | 1d | 2022-01-19 | 2022-01-19 | 32 | 20d | Foreman; Machine; Materials [1 Pipes]; Operator | 16h | 844 |
| 34 | 6.4 | **Area 03** | 80d | 2021-10-14 | 2022-02-02 |  | 10d |  | 216h | 46,644 |
| 35 | 6.4.1 | Permit Received | 1d | 2021-10-14 | 2021-10-14 | 11 | 68d |  |  |  |
| 36 | 6.4.2 | Piling Rig move | 1d | 2022-01-19 | 2022-01-19 | 35, 32 | 0d | Foreman; Machine; Materials [1 Pipes]; Operator; Piling Rig | 24h | 8,340 |
| 37 | 6.4.3 | Piling installation | 4d | 2022-01-20 | 2022-01-25 | 36 | 0d | Foreman; Machine; Materials [1 Pipes]; Operator; Piling Rig | 96h | 33,300 |
| 38 | 6.4.4 | Piling Testing & Inspection | 2d | 2022-01-26 | 2022-01-27 | 37 | 0d | Foreman; Machine; Materials [1 Pipes]; Operator | 32h | 1,668 |
| 39 | 6.4.5 | Piling cap installation | 3d | 2022-01-28 | 2022-02-01 | 38 | 0d | Foreman; Machine; Materials [1 Pipes]; Operator | 48h | 2,492 |
| 40 | 6.4.6 | Backfilling and site cleanup | 1d | 2022-02-02 | 2022-02-02 | 39 | 10d | Foreman; Machine; Materials [1 Pipes]; Operator | 16h | 844 |
| 41 | 6.5 | **Area 04** | 90d | 2021-10-14 | 2022-02-16 |  | 0d |  | 216h | 46,644 |
| 42 | 6.5.1 | Permit Received | 1d | 2021-10-14 | 2021-10-14 | 11 | 78d |  |  |  |
| 43 | 6.5.2 | Piling Rig move | 1d | 2022-02-02 | 2022-02-02 | 42, 39 | 0d | Foreman; Machine; Materials [1 Pipes]; Operator; Piling Rig | 24h | 8,340 |
| 44 | 6.5.3 | Piling installation | 4d | 2022-02-03 | 2022-02-08 | 43 | 0d | Foreman; Machine; Materials [1 Pipes]; Operator; Piling Rig | 96h | 33,300 |
| 45 | 6.5.4 | Piling Testing & Inspection | 2d | 2022-02-09 | 2022-02-10 | 44 | 0d | Foreman; Machine; Materials [1 Pipes]; Operator | 32h | 1,668 |
| 46 | 6.5.5 | Piling cap installation | 3d | 2022-02-11 | 2022-02-15 | 45 | 0d | Foreman; Machine; Materials [1 Pipes]; Operator | 48h | 2,492 |
| 47 | 6.5.6 | Backfilling and site cleanup | 1d | 2022-02-16 | 2022-02-16 | 46 | 0d | Foreman; Machine; Materials [1 Pipes]; Operator | 16h | 844 |
| 48 | 6.6 | **Area 05** | 90d | 2021-10-14 | 2022-02-16 |  | 0d |  | 216h | 46,644 |
| 49 | 6.6.1 | Permit Received | 1d | 2021-10-14 | 2021-10-14 | 11 | 78d |  |  |  |
| 50 | 6.6.2 | Piling Rig move | 1d | 2022-02-02 | 2022-02-02 | 49, 39 | 0d | Foreman; Machine; Materials [1 Pipes]; Operator; Piling Rig [200%] | 24h | 8,340 |
| 51 | 6.6.3 | Piling installation | 4d | 2022-02-03 | 2022-02-08 | 50 | 0d | Foreman; Machine; Materials [1 Pipes]; Operator; Piling Rig | 96h | 33,300 |
| 52 | 6.6.4 | Piling Testing & Inspection | 2d | 2022-02-09 | 2022-02-10 | 51 | 0d | Foreman; Machine; Materials [1 Pipes]; Operator | 32h | 1,668 |
| 53 | 6.6.5 | Piling cap installation | 3d | 2022-02-11 | 2022-02-15 | 52 | 0d | Foreman; Machine; Materials [1 Pipes]; Operator | 48h | 2,492 |
| 54 | 6.6.6 | Backfilling and site cleanup | 1d | 2022-02-16 | 2022-02-16 | 53 | 0d | Foreman; Machine; Materials [1 Pipes]; Operator | 16h | 844 |
